# 软件开发

Schedule from MS Project, 2017-03-01 to 2017-05-23, A marks actual dates.

## Calendars

- 标准: Mon-Fri 08:00-12:00, 13:00-17:00; Sat-Sun off. Exceptions (off unless hours are given): 2017-04-01 08:00-12:00, 13:00-17:00, 2017-04-22 08:00-12:00, 13:00-17:00, 2017-04-29 08:00-12:00, 13:00-17:00, 2017-05-07 08:00-12:00, 13:00-17:00, 2017-05-14 08:00-12:00, 13:00-17:00, 2017-05-20 08:00-12:00, 13:00-17:00.

## Resources

| Resource |
| --- |
| 管理人员 |
| 项目经理 |
| 分析人员 |
| 开发人员 |
| 测试人员 |
| 培训人员 |
| 技术联络人员 |
| 部署小组 |
| 全体开发人员 |
| 黎文彬 |
| 宋羽珩 |

## Schedule

| ID | WBS | Task | Type | Duration | Start | Finish | Predecessors | Complete | Remaining | Total slack | Free slack | Constraint | Resources | Work | Actual work |
| --- | --- | --- | --- | --- | --- | --- | --- | --- | --- | --- | --- | --- | --- | --- | --- |
| 1 | 1 | **项目立项准备** |  | 8d? | 2017-03-01 A | 2017-03-10 A |  | 100% |  |  |  |  |  | 72h | 72h |
| 2 | 1.1 | 调研 |  | 6d? | 2017-03-01 A | 2017-03-08 A |  | 100% |  |  |  |  | 宋羽珩; 黎文彬 | 48h | 48h |
| 3 | 1.2 | 项目申报 |  | 3d? | 2017-03-08 A | 2017-03-10 A |  | 100% |  |  |  |  | 黎文彬; 宋羽珩 | 24h | 24h |
| 4 | 2 | **分析/软件需求** |  | 11d | 2017-03-15 A | 2017-03-29 |  | 69% | 3.4d | 7.5d |  |  |  | 72h | 60.8h |
| 5 | 2.1 | 问题识别 | milestone | 0d | 2017-03-15 A | 2017-03-17 A |  | 100% |  |  |  | finish no earlier than 2017-03-17 | 黎文彬; 宋羽珩 |  |  |
| 6 | 2.2 | 分析需求与综合 |  | 1d | 2017-03-16 A | 2017-03-20 A | 5 | 100% |  |  |  | finish no earlier than 2017-03-17 | 黎文彬; 宋羽珩 | 16h | 16h |
| 7 | 2.3 | 定制需求清单和规格说明 |  | 3.5d | 2017-03-23 A | 2017-03-28 | 6 | 80% | 0.7d | 27d | 0d | finish no earlier than 2017-03-28 | 黎文彬; 宋羽珩 | 56h | 44.8h |
| 8 | 2.4 | 评审 | milestone | 1d | 2017-03-29 | 2017-03-29 | 7 |  |  | 27d | 0d | finish no earlier than 2017-03-29 |  |  |  |
| 9 | 3 | **系统设计** |  | 16d | 2017-03-30 | 2017-04-19 |  |  |  | 2.5d | 0d |  | 宋羽珩; 黎文彬 | 392h |  |
| 10 | 3.1 | 系统模块确定 |  | 1d | 2017-03-30 | 2017-03-30 | 8 |  |  | 13.5d | 3d | finish no earlier than 2017-03-25 | 宋羽珩; 黎文彬 | 16h |  |
| 11 | 3.2 | 系统模块设计 |  | 2d | 2017-04-04 | 2017-04-05 | 10 |  |  | 10.5d | 0d | finish no earlier than 2017-04-05 | 宋羽珩; 黎文彬 | 32h |  |
| 12 | 3.3 | 系统建模 |  | 2d | 2017-04-06 | 2017-04-07 | 11 |  |  | 10.5d | 2d | start no earlier than 2017-04-06 | 宋羽珩; 黎文彬 | 32h |  |
| 13 | 3.4 | 审阅功能规范 |  | 6d | 2017-04-12 | 2017-04-19 | 12 |  |  | 8.5d | 5.5d | finish no earlier than 2017-04-19 | 黎文彬 | 48h |  |
| 14 | 3.5 | 完成系统详细设计书并评审 | milestone | 0.5d | 2017-04-19 | 2017-04-19 |  |  |  | 23d | 0d | finish no earlier than 2017-04-19 | 宋羽珩; 黎文彬 | 8h |  |
| 15 | 4 | **开发** |  | 13.5d | 2017-04-20 | 2017-05-05 | 9 |  |  | 2.5d | 0d |  |  | 148h |  |
| 16 | 4.1 | 审阅功能规范 |  | 1d | 2017-04-20 | 2017-04-20 | 14 |  |  | 8.5d | 0d |  | 黎文彬 | 8h |  |
| 17 | 4.2 | 确定模块化/分层设计参数 |  | 0.5d | 2017-04-21 | 2017-04-21 | 16 |  |  | 8.5d | 1.5d |  | 宋羽珩; 黎文彬 | 8h |  |
| 18 | 4.3 | 服务器搭建 |  | 6d | 2017-04-24 | 2017-04-29 | 17 |  |  | 1d | 0d | finish no earlier than 2017-04-29 | 宋羽珩 | 48h |  |
| 19 | 4.4 | 服务器端实现 |  | 4.5d | 2017-05-01 | 2017-05-05 | 18 |  |  | 1d |  |  | 宋羽珩 | 36h |  |
| 20 | 4.5 | 客户端实现 |  | 6d | 2017-04-27 | 2017-05-03 |  |  |  | 2.5d | 0d | finish no earlier than 2017-05-03 | 黎文彬 | 48h |  |
| 21 | 4.6 | 提交源代码 | milestone | 0d | 2017-05-03 | 2017-05-03 | 20 |  |  | 17d |  |  | 黎文彬 |  |  |
| 22 | 5 | **测试** |  | 17.5d? | 2017-04-26 | 2017-05-16 |  |  |  | 7d |  |  |  | 208h |  |
| 23 | 5.1 | 根据产品规范制定单元测试计划 |  | 2.5d | 2017-04-26 | 2017-04-28 | 13 |  |  | 16.5d | 0d | finish no earlier than 2017-04-28 | 黎文彬; 宋羽珩 | 40h |  |
| 24 | 5.2 | 根据产品规范制定整体测试计划 |  | 1d | 2017-04-29 | 2017-04-29 |  |  |  | 20d |  | start no earlier than 2017-04-29 | 黎文彬 | 8h |  |
| 25 | 5.3 | 单元测试 |  | 4.5d? | 2017-04-29 | 2017-05-04 | 23 |  |  | 16.5d |  | finish no earlier than 2017-05-03 | 黎文彬; 宋羽珩 | 72h |  |

| ID | WBS | Task | Type | Duration | Start | Finish | Predecessors | Total slack | Free slack | Constraint | Resources | Work |
| --- | --- | --- | --- | --- | --- | --- | --- | --- | --- | --- | --- | --- |
| 26 | 5.4 | **整体测试** |  | 9.5d? | 2017-05-05 | 2017-05-16 | 15 | 1d | 0d |  |  | 88h |
| 27 | 5.4.1 | 测试模块集成情况 |  | 2d | 2017-05-05 | 2017-05-08 | 21 | 1d | 0d | finish no earlier than 2017-05-06 | 黎文彬 | 16h |
| 28 | 5.4.2 | 找出不符合规范的异常情况 |  | 2d | 2017-05-08 | 2017-05-10 | 27 | 2d | 0d | start no earlier than 2017-05-07 | 黎文彬 | 16h |
| 29 | 5.4.3 | 修改代码 |  | 1.5d | 2017-05-10 | 2017-05-11 | 28 | 2d | 0d |  | 黎文彬; 宋羽珩 | 24h |
| 30 | 5.4.4 | 重新测试经过修改的代码 |  | 2d | 2017-05-12 | 2017-05-14 | 29 | 2d | 0d |  | 宋羽珩 | 16h |
| 31 | 5.4.5 | 整体测试完成 | milestone | 0d | 2017-05-14 | 2017-05-14 | 30 | 7d | 0d |  | 黎文彬 |  |
| 32 | 5.4.6 | 验收测试 | milestone | 2d? | 2017-05-15 | 2017-05-16 | 31 | 1d |  |  | 宋羽珩 | 16h |
| 33 | 6 | **文档** |  | 3d | 2017-05-17 | 2017-05-19 | 26 | 0d |  |  |  | 40h |
| 34 | 6.1 | 制定“帮助”规范 |  | 1d | 2017-05-17 | 2017-05-17 |  | 1d | 0d | finish no earlier than 2017-05-16 | 宋羽珩 | 8h |
| 35 | 6.2 | 审阅“帮助”文档 |  | 1d | 2017-05-18 | 2017-05-18 | 34 | 1d |  |  | 黎文彬 | 8h |
| 36 | 6.3 | 编写用户手册 |  | 0.2w | 2017-05-18 | 2017-05-18 | 32FS-5% | 0d |  | must start on 2017-05-18 | 黎文彬 | 8h |
| 37 | 6.4 | 整理项目有关文档 |  | 1d | 2017-05-19 | 2017-05-19 | 36 | 0d |  |  | 黎文彬; 宋羽珩 | 16h |
| 38 | 6.5 | 文档完成 | milestone | 0d | 2017-05-19 | 2017-05-19 | 37 | 0d |  |  | 宋羽珩; 黎文彬 |  |
| 39 | 7 | **项目总结** |  | 3d | 2017-05-20 | 2017-05-23 | 33 | 0d |  |  |  | 48h |
| 40 | 7.1 | 项目总结展示准备 |  | 3d | 2017-05-20 | 2017-05-23 |  | 0d |  | start no earlier than 2017-05-20 | 黎文彬; 宋羽珩 | 48h |
| 41 | 7.2 | 回顾完成 | milestone | 0d | 2017-05-23 | 2017-05-23 | 40 | 0d |  |  |  |  |
